# PZP Projekt

Schedule from GanttProject, 2024-03-08 to 2026-02-26.
Sigmund Burger GmbH

## Calendars

- Project calendar: Mon-Fri working; Sat-Sun off. Exceptions (off unless hours are given): 2024-03-29, 2024-04-01, 2024-05-01, 2024-05-09, 2024-05-20, 2024-05-30, 2024-10-03, 2024-11-01, 2024-12-24 to 2025-01-06, 2025-04-18, 2025-04-21, 2025-05-01, 2025-05-29, 2025-06-09, 2025-06-19, 2025-10-03, 2025-11-01, 2025-12-24 to 2026-01-06.

## Schedule

| ID | WBS | Task | Duration | Start | Finish | Predecessors |
| --- | --- | --- | --- | --- | --- | --- |
| 1 | 1 | Bauvertrag unterzeichnen | 1d | 2024-03-08 | 2024-03-08 |  |
| 2 | 2 | Baustellenschild Rahmen 1 stellen | 1d | 2024-03-11 | 2024-03-11 | 1 |
| 3 | 3 | Bauvertrag nacharbeiten | 1d | 2024-03-11 | 2024-03-11 | 1 |
| 4 | 4 | Bauherr zur Erstellung der Küchenplanung auffordern | 5d | 2024-03-11 | 2024-03-15 | 3SS |
| 5 | 5 | PZP erstellen | 1d | 2024-03-12 | 2024-03-12 | 3 |
| 6 | 6 | Beginn PZP ausrollen | 0d | 2024-03-13 | 2024-03-13 | 5 |
| 7 | 7 | PZP ausrollen | 1d | 2024-03-20 | 2024-03-20 | 5FS+5d |
| 8 | 8 | Geschosszeiten, Polier Rohbau bestimmen | 3d | 2024-03-28 | 2024-04-03 | 7FS+5d |
| 9 | 9 | Geschosszeiten, Polier in PZP eintragen | 1d | 2024-04-09 | 2024-04-09 | 8FS+3d |
| 10 | 10 | Projektsteuerung überwachen | 20d | 2024-04-25 | 2024-05-27 | 11FS+5d |
| 11 | 11 | Projektbeteiligte festlegen | 3d | 2024-04-15 | 2024-04-17 | 9FS+3d |
| 12 | 12 | Statiker beauftragen | 1d | 2024-04-23 | 2024-04-23 | 11FS+3d |
| 13 | 13 | PZP projektindividuell einstellen | 1d | 2024-04-23 | 2024-04-23 | 11FS+3d |
| 14 | 14 | Brandschutz: Angebot anfragen und Eingang kontrollieren | 10d | 2024-04-22 | 2024-05-06 | 11FS+2d |
| 15 | 15 | Brandschutz: Angebot prüfen und beauftragen | 3d | 2024-05-10 | 2024-05-14 | 14FS+2d |
| 16 | 16 | Brandschutz: Eingang Brandschutzgutachten verfolgen | 15d | 2024-05-17 | 2024-06-10 | 15FS+2d |
| 17 | 17 | Schallschutz: Angebot anfragen und Eingang kontrollieren | 10d | 2024-04-22 | 2024-05-06 | 11FS+2d |
| 18 | 18 | Schallschutz: Angebot prüfen und beauftragen | 3d | 2024-05-10 | 2024-05-14 | 17FS+2d |
| 19 | 19 | Schallschutz: Eingang Schallschutzgutachten verfolgen | 15d | 2024-05-17 | 2024-06-10 | 18FS+2d |
| 20 | 20 | Vertragsergänzende Projektinformationen durchsprechen | 1d | 2024-04-22 | 2024-04-22 | 11FS+2d |
| 21 | 21 | Termin zur Projektübergabe BH vereinbaren | 1d | 2024-04-25 | 2024-04-25 | 20FS+2d |
| 22 | 22 | Projekt übergeben | 1d | 2024-04-30 | 2024-04-30 | 21FS+2d |
| 23 | 23 | Auftrag nach Projektübergabe aktualisieren | 2d | 2024-05-02 | 2024-05-03 | 22 |
| 24 | 24 | BH zum Bemusterungstermin Etappe 2 einladen | 1d | 2024-05-10 | 2024-05-10 | 23FS+3d |
| 25 | 25 | Bemusterungstermin Etappe 2 durchführen | 5d | 2024-05-16 | 2024-05-23 | 24FS+3d |
| 26 | 26 | H/L/S/E intern prüfen | 1d | 2024-05-29 | 2024-05-29 | 25FS+3d |
| 27 | 27 | Fachingenieur zur H/L/S Projektierung beauftragen | 1d | 2024-06-05 | 2024-06-05 | 26FS+3d |
| 28 | 28 | Globale LE nach Bemusterung erstellen | 5d | 2024-05-29 | 2024-06-05 | 25FS+3d |
| 29 | 29 | Globale LE an Bauherr senden | 2d | 2024-06-07 | 2024-06-10 | 28FS+1d |
| 30 | 30 | Bemusterungstermine Etappe 3 vorbereiten | 2d | 2024-06-12 | 2024-06-13 | 29FS+1d |
| 31 | 31 | Ende PZP ausrollen | 0d | 2024-06-14 | 2024-06-14 | 30 |
| 32 | 32 | Bauantrag beginnen | 1d | 2024-06-19 | 2024-06-19 | 30FS+3d |

| ID | WBS | Task | Duration | Start | Finish | Predecessors |
| --- | --- | --- | --- | --- | --- | --- |
| 33 | 33 | **Beginn Bauantrag beginnen** | 0d |  |  |  |
| 34 | 33.1 | BA: Pläne zum Bauantrag erstellen | 5d | 2024-06-20 | 2024-06-26 | 32 |
| 35 | 33.2 | BA: H/L/S/E-Projektierung integrieren | 5d | 2024-06-06 | 2024-06-12 | 27 |
| 36 | 33.3 | BA: Brandschutzgutachten in Bauantragsplanung integrieren | 2d | 2024-06-11 | 2024-06-12 | 16 |
| 37 | 33.4 | BA: Schallschutzgutachten in Bauantragsplanung integrieren | 2d | 2024-06-11 | 2024-06-12 | 19 |
| 38 | 33.5 | BA: Berechnungen erstellen | 1d | 2024-06-27 | 2024-06-27 | 34 |
| 39 | 33.6 | BA: Formulare zum Bauantrag erstellen | 1d | 2024-06-27 | 2024-06-27 | 38SS |
| 40 | 33.7 | BA: Vorstatik veranlassen | 3d | 2024-06-28 | 2024-07-02 | 38 |
| 41 | 33.8 | BA: Sachverständigenlageplan beauftragen | 5d | 2024-06-28 | 2024-07-04 | 38 |
| 42 | 33.9 | BA: Entwässerungsantrag erstellen | 5d | 2024-06-28 | 2024-07-04 | 38 |
| 43 | 33.10 | BA: Bauantragsunterlagen zusammenstellen | 2d | 2024-06-28 | 2024-07-01 | 39 |
| 44 | 33.11 | BA: Bauantrag prüfen und Freigabe für digitalen Bauantrag erteilen | 1d | 2024-07-02 | 2024-07-02 | 43 |
| 45 | 33.12 | BA: Bauherr zum digitalen Bauantrag einladen und Freigabe anfordern | 1d | 2024-07-05 | 2024-07-05 | 44FS+2d |
| 46 | 33.13 | BA: Eingang Bauantrag prüfen und einreichen | 2d | 2024-07-08 | 2024-07-09 | 45 |
| 47 | 33.14 | Holz100: Auftrag erteilen | 5d | 2024-07-17 | 2024-07-23 | 46FS+5d |
| 48 | 33.15 | Holz 100: Holzbauplanung Auftrag erteilen und Eingang überwachen | 12d | 2024-07-29 | 2024-08-13 | 47FS+3d |
| 49 | 33.16 | Holz 100: Planung prüfen und freigeben | 3d | 2024-08-19 | 2024-08-21 | 48FS+3d |
| 50 | 34 | Ausschreibung H/L/S/E beginnen | 15d | 2024-06-25 | 2024-07-15 | 32FS+3d |
| 51 | 35 | **Beginn Ausschreibung H/L/S/E** | 0d |  |  |  |
| 52 | 35.1 | Gesamt LV-Excel und Raumbücher aus VI erstellen | 1d | 2024-06-25 | 2024-06-25 | 50SS |
| 53 | 35.2 | Firmen H/L/S/E für Ausschreibung benennen | 1d | 2024-06-24 | 2024-06-24 | 52SF |
| 54 | 35.3 | Sanitär : Ausschreibung fertigstellen und versenden | 1d | 2024-06-25 | 2024-06-25 | 53 |
| 55 | 35.4 | Sanitär: Preisspiegel erstellen | 1d | 2024-07-01 | 2024-07-01 | 54FS+3d |
| 56 | 35.5 | Sanitär: Vergabeverhandlung führen | 1d | 2024-07-05 | 2024-07-05 | 55FS+3d |
| 57 | 35.6 | Sanitär: Handwerkervertrag erstellen und versenden | 1d | 2024-07-08 | 2024-07-08 | 56 |
| 58 | 35.7 | Sanitär: Eingang Handwerkervertrag Vertrag kontrollieren | 1d | 2024-07-12 | 2024-07-12 | 57FS+3d |
| 59 | 35.8 | Sanitär: Handwerkervertrag in Stammdaten / PZP erfassen | 1d | 2024-07-15 | 2024-07-15 | 58 |
| 60 | 35.9 | Heizung/Lüftung : Ausschreibung fertigstellen und versenden | 1d | 2024-06-25 | 2024-06-25 | 53 |
| 61 | 35.10 | Heizung/Lüftung: Preisspiegel erstellen | 1d | 2024-07-01 | 2024-07-01 | 60FS+3d |
| 62 | 35.11 | Heizung/Lüftung: Vergabeverhandlung führen | 1d | 2024-07-05 | 2024-07-05 | 61FS+3d |
| 63 | 35.12 | Heizung/Lüftung: Handwerkervertrag erstellen und versenden | 1d | 2024-07-08 | 2024-07-08 | 62 |
| 64 | 35.13 | Heizung/Lüftung: Eingang Handwerkervertrag Vertrag kontrollieren | 1d | 2024-07-12 | 2024-07-12 | 63FS+3d |
| 65 | 35.14 | Heizung/Lüftung: Handwerkervertrag in Stammdaten / PZP erfassen | 1d | 2024-07-15 | 2024-07-15 | 64 |
| 66 | 35.15 | Heizlastberechnung anfordern und Eingang überwachen | 4d | 2024-07-16 | 2024-07-19 | 65 |
| 67 | 35.16 | Elektro: Ausschreibung fertigstellen und versenden | 1d | 2024-06-25 | 2024-06-25 | 53 |
| 68 | 35.17 | Elektro: Angebot Photovoltaik anfragen und Eingang überwachen und beauftragen | 6d | 2024-06-26 | 2024-07-03 | 67 |
| 69 | 35.18 | Elektro: Preisspiegel erstellen | 1d | 2024-07-01 | 2024-07-01 | 67FS+3d |
| 70 | 35.19 | Elektro: Vergabeverhandlung führen | 1d | 2024-07-05 | 2024-07-05 | 69FS+3d |
| 71 | 35.20 | Elektro: Handwerkervertrag erstellen und versenden | 1d | 2024-07-08 | 2024-07-08 | 70 |
| 72 | 35.21 | Elektro: Eingang Handwerkervertrag Vertrag kontrollieren | 1d | 2024-07-12 | 2024-07-12 | 71FS+3d |
| 73 | 35.22 | Elektro: Handwerkervertrag in Stammdaten / PZP erfassen | 1d | 2024-07-15 | 2024-07-15 | 72 |
| 74 | 36 | Bemusterungen durchführen | 24d | 2024-03-12 | 2024-04-16 |  |

| ID | WBS | Task | Duration | Start | Finish | Predecessors |
| --- | --- | --- | --- | --- | --- | --- |
| 75 | 37 | **Beginn Bemusterungen durchführen** | 0d |  |  |  |
| 76 | 37.1 | Interne Bemusterungen durchführen | 5d | 2024-03-12 | 2024-03-18 | 74SS |
| 77 | 37.2 | Externe Bemusterungen durchführen | 17d | 2024-03-12 | 2024-04-05 |  |
| 78 | 37.3 | Bemusterung Fensterbänke innen | 2d | 2024-03-19 | 2024-03-20 | 76 |
| 79 | 37.4 | Bemusterung Fensterbänke innen: Termin vereinbaren und Bemusterung überwachen | 10d | 2024-03-21 | 2024-04-05 | 78 |
| 80 | 37.5 | Bemusterung Fliesen | 2d | 2024-03-19 | 2024-03-20 | 76 |
| 81 | 37.6 | Bemusterung Fliesen: Termin vereinbaren und Bemusterung überwachen | 10d | 2024-03-21 | 2024-04-05 | 80 |
| 82 | 37.7 | Bemusterung Sanitär | 2d | 2024-03-19 | 2024-03-20 | 76 |
| 83 | 37.8 | Bemusterung Sanitär: Termin vereinbaren und Bemusterung überwachen | 10d | 2024-03-21 | 2024-04-05 | 82 |
| 84 | 37.9 | Bemusterung Treppe | 2d | 2024-03-19 | 2024-03-20 | 76 |
| 85 | 37.10 | Bemusterung Treppe: Termin vereinbaren und Bemusterung überwachen | 10d | 2024-03-21 | 2024-04-05 | 84 |
| 86 | 37.11 | Bemusterung Bodenbeläge | 2d | 2024-03-19 | 2024-03-20 | 76 |
| 87 | 37.12 | Bemusterung Bodenbeläge: Termin vereinbaren und Bemusterung überwachen | 10d | 2024-03-21 | 2024-04-05 | 86 |
| 88 | 37.13 | Bemusterung Schreiner | 2d | 2024-03-19 | 2024-03-20 | 76 |
| 89 | 37.14 | Bemusterung Schreiner: Termin vereinbaren und Bemusterung überwachen | 10d | 2024-03-21 | 2024-04-05 | 88 |
| 90 | 37.15 | Bemusterung Elektro | 2d | 2024-03-19 | 2024-03-20 | 76 |
| 91 | 37.16 | Bemusterung Elektro: Termin vereinbaren und Bemusterung überwachen | 10d | 2024-03-21 | 2024-04-05 | 90 |
| 92 | 37.17 | Externe Bemusterungen: Eingang Angebote überwachen | 2d | 2024-04-15 | 2024-04-16 | 77FS+5d |
| 93 | 37.18 | Angebote aus Bemusterung dokumentieren | 2d | 2024-04-24 | 2024-04-25 | 92FS+5d |
| 94 | 37.19 | Globale Leistungszusammenstellung erarbeiten | 2d | 2024-05-06 | 2024-05-07 | 93FS+5d |
| 95 | 37.20 | Globale Leitungszusammenstellung prüfen | 5d | 2024-05-10 | 2024-05-16 | 94FS+1d |
| 96 | 37.21 | Globale Leitungszusammenstellung und Ausführungsplanung zur Freigabe an Bauherr versenden | 2d | 2024-05-21 | 2024-05-22 | 95FS+1d |
| 97 | 37.22 | Freigabe Leitungszusammenstellung überwachen | 2d | 2024-05-24 | 2024-05-27 | 96FS+1d |
| 98 | 37.23 | Freigegebene Ausführungsplanung an Projektbeteiligte versenden | 1d | 2024-05-28 | 2024-05-28 | 97 |
| 99 | 37.24 | Finale Projektunterlagen aufbereiten | 2d | 2024-05-31 | 2024-06-03 | 98FS+1d |
| 100 | 38 | BA: Bauantrag verfolgen | 93d | 2024-07-08 | 2024-11-15 |  |
| 101 | 39 | BA: Eingang der Vollständikeitsbescheinigung prüfen | 15d | 2024-07-10 | 2024-07-30 | 46 |
| 102 | 40 | BA: Geforderte Unterlagen nachreichen | 5d | 2024-07-31 | 2024-08-06 | 101 |
| 103 | 41 | BA: Eingang Baugenehmigung prüfen | 1d | 2024-10-31 | 2024-10-31 | 102FS+60d |
| 104 | 42 | BA: Auflagen und Hinweise bearbeiten und disponieren | 5d | 2024-11-04 | 2024-11-08 | 103 |
| 105 | 43 | BA: Auflagen bearbeiten | 5d | 2024-11-04 | 2024-11-08 | 103 |
| 106 | 44 | Baufreigabe ist vorhanden | 5d | 2024-11-11 | 2024-11-15 | 105 |
| 107 | 45 | Ausführungsplanung beginnen | 1d | 2024-08-14 | 2024-08-14 | 102FS+5d |
| 108 | 46 | Bauantragsplanung auf Ausführungsplanung umstellen und vorbereiten | 10d | 2024-08-15 | 2024-08-28 | 107 |
| 109 | 47 | Detailplanungen erstellen | 3d | 2024-08-29 | 2024-09-02 | 108 |
| 110 | 48 | Ausführungsplanung Vorabzug an H/L/S/E versenden | 1d | 2024-09-03 | 2024-09-03 | 109 |
| 111 | 49 | Elektro: Projektierungsplan erstellen | 3d | 2024-09-04 | 2024-09-06 | 110 |
| 112 | 50 | Änderungen bzw. Ergänzungen Haustechnik in Ausführungsplanung einpflegen | 2d | 2024-09-09 | 2024-09-10 | 111 |
| 113 | 51 | Ausführungsplanung Vorabzug an Statiker senden | 1d | 2024-09-11 | 2024-09-11 | 112 |
| 114 | 52 | Schalpläne erstellen | 5d | 2024-09-12 | 2024-09-18 | 113 |
| 115 | 53 | Schalplan prüfen und freigeben | 5d | 2024-09-19 | 2024-09-25 | 114 |
| 116 | 54 | Bewehrungspläne erstellen | 5d | 2024-09-26 | 2024-10-02 | 115 |
| 117 | 55 | Eingang Bewehrungspläne überwachen und ablegen | 5d | 2024-10-04 | 2024-10-10 | 116 |
| 118 | 56 | Ausschreibungen beginnen | 15d | 2024-08-15 | 2024-09-04 |  |

| ID | WBS | Task | Duration | Start | Finish | Predecessors |
| --- | --- | --- | --- | --- | --- | --- |
| 119 | 57 | **Beginn Ausschreibungen beginnen** | 0d |  |  |  |
| 120 | 57.1 | Erdarbeiten: Baugrubenaushub Massen ermitteln | 2d | 2024-08-15 | 2024-08-16 | 118SS |
| 121 | 57.2 | Erdarbeiten: Ausschreibung fertigstellen und versenden | 2d | 2024-08-19 | 2024-08-20 | 120 |
| 122 | 57.3 | Erdarbeiten: Preisspiegel erstellen | 3d | 2024-08-21 | 2024-08-23 | 121 |
| 123 | 57.4 | Erdarbeiten: Vergabeverhandlungen führen | 1d | 2024-08-26 | 2024-08-26 | 122 |
| 124 | 57.5 | Erdarbeiten: Handwerkervertrag erstellen und versenden | 1d | 2024-08-27 | 2024-08-27 | 123 |
| 125 | 57.6 | Erdarbeiten: Eingang Handwerkervertrag kontrollieren | 1d | 2024-09-02 | 2024-09-02 | 124FS+3d |
| 126 | 57.7 | Erdarbeiten: Handwerkervertrag in Stammdaten/PZP erfassen | 1d | 2024-09-03 | 2024-09-03 | 125 |
| 127 | 57.8 | Rohbau: Ausschreibung fertigstellen und versenden | 1d | 2024-08-15 | 2024-08-15 | 118SS |
| 128 | 57.9 | Rohbau: Preisspiegel erstellen | 1d | 2024-08-21 | 2024-08-21 | 127FS+3d |
| 129 | 57.10 | Rohbau: Vergabeverhandlung führen | 1d | 2024-08-27 | 2024-08-27 | 128FS+3d |
| 130 | 57.11 | Rohbau: Handwerkervertrag erstellen und versenden | 1d | 2024-08-28 | 2024-08-28 | 129 |
| 131 | 57.12 | Rohbau: Eingang Handwerkervertrag kontrollieren | 1d | 2024-09-03 | 2024-09-03 | 130FS+3d |
| 132 | 57.13 | Rohbau: Handwerkervertrag in Stammdaten / PZP erfassen | 1d | 2024-09-04 | 2024-09-04 | 131 |
| 133 | 57.14 | Aufzug: Anfrage des Aufzuges gemäß Burgerhaus -Standard formulieren | 1d | 2024-08-15 | 2024-08-15 | 118SS |
| 134 | 57.15 | Aufzug: Ausschreibung fertigstellen und versenden | 1d | 2024-08-16 | 2024-08-16 | 133 |
| 135 | 57.16 | Aufzug: Preisspiegel erstellen | 1d | 2024-08-22 | 2024-08-22 | 134FS+3d |
| 136 | 57.17 | Aufzug: Vergabeverhandlung führen | 1d | 2024-08-28 | 2024-08-28 | 135FS+3d |
| 137 | 57.18 | Aufzug: Handwerkervertrag erstellen und versenden | 1d | 2024-08-29 | 2024-08-29 | 136 |
| 138 | 57.19 | Aufzug: Eingang Handwerkervertrag kontrollieren | 1d | 2024-09-04 | 2024-09-04 | 137FS+3d |
| 139 | 57.20 | Aufzug: Handwerkervertrag in Stammdaten / PZP erfassen | 1d | 2024-09-05 | 2024-09-05 | 138 |
| 140 | 57.21 | Treppe: Ausschreibung fertigstellen und versenden | 1d | 2024-08-15 | 2024-08-15 | 118SS |
| 141 | 57.22 | Treppe: Preisspiegel erstellen | 1d | 2024-08-21 | 2024-08-21 | 140FS+3d |
| 142 | 57.23 | Treppe: Vergabeverhandlung führen | 1d | 2024-08-27 | 2024-08-27 | 141FS+3d |
| 143 | 57.24 | Treppe: Handwerkervertrag erstellen und versenden | 1d | 2024-08-28 | 2024-08-28 | 142 |
| 144 | 57.25 | Treppe: Eingang Handwerkervertrag kontrollieren | 1d | 2024-09-03 | 2024-09-03 | 143FS+3d |
| 145 | 57.26 | Treppe: Handwerkervertrag in Stammdaten / PZP erfassen | 1d | 2024-09-04 | 2024-09-04 | 144 |
| 146 | 57.27 | Zimmermann und Dachdecker: Ausschreibung fertigstellen und versenden | 1d | 2024-08-15 | 2024-08-15 | 118SS |
| 147 | 57.28 | Zimmermann und Dachdecker: Preisspiegel erstellen | 1d | 2024-08-16 | 2024-08-16 | 146 |
| 148 | 57.29 | Zimmermann und Dachdecker: Vergabeverhandlung führen | 1d | 2024-08-22 | 2024-08-22 | 147FS+3d |
| 149 | 57.30 | Zimmermann und Dachdecker: Handwerkervertrag erstellen und versenden | 1d | 2024-08-23 | 2024-08-23 | 148 |
| 150 | 57.31 | Zimmermann und Dachdecker: Eingang Handwerkervertrag kontrollieren | 1d | 2024-08-29 | 2024-08-29 | 149FS+3d |
| 151 | 57.32 | Zimmermann und Dachdecker: Handwerkervertrag in Stammdaten / PZP erfassen | 1d | 2024-08-30 | 2024-08-30 | 150 |
| 152 | 57.33 | Flachdach: Ausschreibung fertigstellen und versenden | 1d | 2024-08-15 | 2024-08-15 | 118SS |
| 153 | 57.34 | Flachdach: Preisspiegel erstellen | 1d | 2024-08-21 | 2024-08-21 | 152FS+3d |
| 154 | 57.35 | Flachdach: Vergabeverhandlung führen | 1d | 2024-08-27 | 2024-08-27 | 153FS+3d |
| 155 | 57.36 | Flachdach: Handwerkervertrag erstellen und versenden | 1d | 2024-08-28 | 2024-08-28 | 154 |
| 156 | 57.37 | Flachdach: Eingang Handwerkervertrag kontrollieren | 1d | 2024-09-03 | 2024-09-03 | 155FS+3d |
| 157 | 57.38 | Flachdach: Handwerkervertrag in Stammdaten / PZP erfassen | 1d | 2024-09-04 | 2024-09-04 | 156 |
| 158 | 57.39 | Blechner: Ausschreibung fertigstellen und versenden | 1d | 2024-08-15 | 2024-08-15 | 118SS |
| 159 | 57.40 | Blechner: Preisspiegel erstellen | 1d | 2024-08-21 | 2024-08-21 | 158FS+3d |
| 160 | 57.41 | Blechner: Vergabeverhandlung führen | 1d | 2024-08-27 | 2024-08-27 | 159FS+3d |
| 161 | 57.42 | Blechner: Handwerkervertrag erstellen und versenden | 1d | 2024-08-28 | 2024-08-28 | 160 |
| 162 | 57.43 | Blechner: Eingang Handwerkervertrag kontrollieren | 1d | 2024-09-03 | 2024-09-03 | 161FS+3d |
| 163 | 57.44 | Blechner: Handwerkervertrag in Stammdaten / PZP erfassen | 1d | 2024-09-04 | 2024-09-04 | 162 |
| 164 | 57.45 | Fensterbau: Ausschreibung fertigstellen und versenden | 1d | 2024-08-15 | 2024-08-15 | 118SS |
| 165 | 57.46 | Fensterbau: Preisspiegel erstellen | 1d | 2024-08-21 | 2024-08-21 | 164FS+3d |
| 166 | 57.47 | Fensterbau: Vergabeverhandlung führen | 1d | 2024-08-27 | 2024-08-27 | 165FS+3d |
| 167 | 57.48 | Fensterbau: Handwerkervertrag erstellen und versenden | 1d | 2024-08-28 | 2024-08-28 | 166 |
| 168 | 57.49 | Fensterbau: Eingang Handwerkervertrag kontrollieren | 1d | 2024-09-03 | 2024-09-03 | 167FS+3d |
| 169 | 57.50 | Fensterbau: Handwerkervertrag in Stammdaten / PZP erfassen | 1d | 2024-09-04 | 2024-09-04 | 168 |
| 170 | 57.51 | Fensterbänke Innen: Ausschreibung fertigstellen und versenden | 1d | 2024-08-15 | 2024-08-15 | 118SS |
| 171 | 57.52 | Fensterbänke Innen: Preisspiegel erstellen | 1d | 2024-08-21 | 2024-08-21 | 170FS+3d |
| 172 | 57.53 | Fensterbänke Innen: Vergabeverhandlung führen | 1d | 2024-08-27 | 2024-08-27 | 171FS+3d |
| 173 | 57.54 | Fensterbänke Innen: Handwerkervertrag erstellen und versenden | 1d | 2024-08-28 | 2024-08-28 | 172 |
| 174 | 57.55 | Fensterbänke Innen: Eingang Handwerkervertrag kontrollieren | 1d | 2024-09-03 | 2024-09-03 | 173FS+3d |
| 175 | 57.56 | Fensterbänke Innen: Handwerkervertrag in Stammdaten / PZP erfassen | 1d | 2024-09-04 | 2024-09-04 | 174 |
| 176 | 57.57 | Innen- und Außenputz: Ausschreibung fertigstellen und versenden | 1d | 2024-08-15 | 2024-08-15 | 118SS |
| 177 | 57.58 | Innen- und Außenputz: Preisspiegel erstellen | 1d | 2024-08-21 | 2024-08-21 | 176FS+3d |
| 178 | 57.59 | Innen- und Außenputz: Vergabeverhandlung führen | 1d | 2024-08-27 | 2024-08-27 | 177FS+3d |
| 179 | 57.60 | Innen- und Außenputz: Handwerkervertrag erstellen und versenden | 1d | 2024-08-28 | 2024-08-28 | 178 |
| 180 | 57.61 | Innen- und Außenputz: Eingang Handwerkervertrag kontrollieren | 1d | 2024-09-03 | 2024-09-03 | 179FS+3d |
| 181 | 57.62 | Innen- und Außenputz: Handwerkervertrag in Stammdaten / PZP erfassen | 1d | 2024-09-04 | 2024-09-04 | 180 |
| 182 | 57.63 | Trockenbau: Ausschreibung fertigstellen und versenden | 1d | 2024-08-15 | 2024-08-15 | 118SS |
| 183 | 57.64 | Trockenbau: Preisspiegel erstellen | 1d | 2024-08-21 | 2024-08-21 | 182FS+3d |
| 184 | 57.65 | Trockenbau: Vergabeverhandlung führen | 1d | 2024-08-27 | 2024-08-27 | 183FS+3d |
| 185 | 57.66 | Trockenbau: Handwerkervertrag erstellen und versenden | 1d | 2024-08-28 | 2024-08-28 | 184 |
| 186 | 57.67 | Trockenbau: Eingang Handwerkervertrag kontrollieren | 1d | 2024-08-29 | 2024-08-29 | 185 |
| 187 | 57.68 | Trockenbau: Handwerkervertrag in Stammdaten / PZP erfassen | 1d | 2024-08-30 | 2024-08-30 | 186 |
| 188 | 57.69 | Estrich: Ausschreibung fertigstellen und versenden | 1d | 2024-08-15 | 2024-08-15 | 118SS |

| ID | WBS | Task | Duration | Start | Finish | Predecessors |
| --- | --- | --- | --- | --- | --- | --- |
| 189 | 57.70 | Estrich: Preisspiegel erstellen | 1d | 2024-08-21 | 2024-08-21 | 188FS+3d |
| 190 | 57.71 | Estrich: Vergabeverhandlung führen | 1d | 2024-08-27 | 2024-08-27 | 189FS+3d |
| 191 | 57.72 | Estrich: Handwerkervertrag erstellen und versenden | 1d | 2024-08-28 | 2024-08-28 | 190 |
| 192 | 57.73 | Estrich: Eingang Handwerkervertrag kontrollieren | 1d | 2024-08-29 | 2024-08-29 | 191 |
| 193 | 57.74 | Estrich: Handwerkervertrag in Stammdaten / PZP erfassen | 1d | 2024-08-30 | 2024-08-30 | 192 |
| 194 | 57.75 | Fliesen: Ausschreibung fertigstellen und versenden | 1d | 2024-08-15 | 2024-08-15 | 118SS |
| 195 | 57.76 | Fliesen: Preisspiegel erstellen | 1d | 2024-08-21 | 2024-08-21 | 194FS+3d |
| 196 | 57.77 | Fliesen: Vergabeverhandlung führen | 1d | 2024-08-27 | 2024-08-27 | 195FS+3d |
| 197 | 57.78 | Fliesen: Handwerkervertrag erstellen und versenden | 1d | 2024-08-28 | 2024-08-28 | 196 |
| 198 | 57.79 | Fliesen: Eingang Handwerkervertrag kontrollieren | 1d | 2024-09-03 | 2024-09-03 | 197FS+3d |
| 199 | 57.80 | Fliesen: Handwerkervertrag in Stammdaten / PZP erfassen | 1d | 2024-09-04 | 2024-09-04 | 198 |
| 200 | 57.81 | Maler: Ausschreibung fertigstellen und versenden | 1d | 2024-08-15 | 2024-08-15 | 118SS |
| 201 | 57.82 | Maler: Preisspiegel erstellen | 1d | 2024-08-21 | 2024-08-21 | 200FS+3d |
| 202 | 57.83 | Maler: Vergabeverhandlung führen | 1d | 2024-08-27 | 2024-08-27 | 201FS+3d |
| 203 | 57.84 | Maler: Handwerkervertrag erstellen und versenden | 1d | 2024-08-28 | 2024-08-28 | 202 |
| 204 | 57.85 | Maler: Eingang Handwerkervertrag kontrollieren | 1d | 2024-09-03 | 2024-09-03 | 203FS+3d |
| 205 | 57.86 | Maler: Handwerkervertrag in Stammdaten / PZP erfassen | 1d | 2024-09-04 | 2024-09-04 | 204 |
| 206 | 57.87 | Schreiner: Ausschreibung fertigstellen und versenden | 1d | 2024-08-15 | 2024-08-15 | 118SS |
| 207 | 57.88 | Schreiner: Preisspiegel erstellen | 1d | 2024-08-21 | 2024-08-21 | 206FS+3d |
| 208 | 57.89 | Schreiner: Vergabeverhandlung führen | 1d | 2024-08-27 | 2024-08-27 | 207FS+3d |
| 209 | 57.90 | Schreiner: Handwerkervertrag erstellen und versenden | 1d | 2024-08-28 | 2024-08-28 | 208 |
| 210 | 57.91 | Schreiner: Eingang Handwerkervertrag kontrollieren | 1d | 2024-09-03 | 2024-09-03 | 209FS+3d |
| 211 | 57.92 | Schreiner: Handwerkervertrag in Stammdaten / PZP erfassen | 1d | 2024-09-04 | 2024-09-04 | 210 |
| 212 | 57.93 | Haustüre: Ausschreibung fertigstellen und versenden | 1d | 2024-08-15 | 2024-08-15 | 118SS |
| 213 | 57.94 | Haustüre: Preisspiegel erstellen | 1d | 2024-08-21 | 2024-08-21 | 212FS+3d |
| 214 | 57.95 | Haustüre: Vergabeverhandlung führen | 1d | 2024-08-27 | 2024-08-27 | 213FS+3d |
| 215 | 57.96 | Haustüre: Handwerkervertrag erstellen und versenden | 1d | 2024-08-28 | 2024-08-28 | 214 |
| 216 | 57.97 | Haustüre: Eingang Handwerkervertrag kontrollieren | 1d | 2024-09-03 | 2024-09-03 | 215FS+3d |
| 217 | 57.98 | Haustüre: Handwerkervertrag in Stammdaten / PZP erfassen | 1d | 2024-09-04 | 2024-09-04 | 216 |
| 218 | 57.99 | Landschaftsgärtner: Ausschreibung fertigstellen und versenden | 1d | 2024-03-12 | 2024-03-12 | 77SS |
| 219 | 57.100 | Landschaftsgärtner: Preisspiegel erstellen | 1d | 2024-03-18 | 2024-03-18 | 218FS+3d |
| 220 | 57.101 | Landschaftsgärtner: Vergabeverhandlung führen | 1d | 2024-03-22 | 2024-03-22 | 219FS+3d |
| 221 | 57.102 | Landschaftsgärtner: Handwerkervertrag erstellen und versenden | 1d | 2024-03-25 | 2024-03-25 | 220 |
| 222 | 57.103 | Landschaftsgärtner: Eingang Handwerkervertrag kontrollieren | 1d | 2024-04-02 | 2024-04-02 | 221FS+3d |
| 223 | 57.104 | Landschaftsgärtner: Handwerkervertrag in Stammdaten / PZP erfassen | 1d | 2024-04-03 | 2024-04-03 | 222 |
| 224 | 57.105 | Bodenbeläge: Ausschreibung fertigstellen und versenden | 1d | 2024-08-15 | 2024-08-15 | 118SS |
| 225 | 57.106 | Bodenbeläge: Preisspiegel erstellen | 1d | 2024-08-21 | 2024-08-21 | 224FS+3d |
| 226 | 57.107 | Bodenbeläge: Vergabeverhandlung führen | 1d | 2024-08-27 | 2024-08-27 | 225FS+3d |
| 227 | 57.108 | Bodenbeläge: Handwerkervertrag erstellen und versenden | 1d | 2024-08-28 | 2024-08-28 | 226 |
| 228 | 57.109 | Bodenbeläge: Eingang Handwerkervertrag kontrollieren | 1d | 2024-09-03 | 2024-09-03 | 227FS+3d |
| 229 | 57.110 | Bodenbeläge: Handwerkervertrag in Stammdaten / PZP erfassen | 1d | 2024-09-04 | 2024-09-04 | 228 |
| 230 | 57.111 | Schlosser: Ausschreibungsunterlagen fertigstellen und versenden | 1d | 2024-08-15 | 2024-08-15 | 118SS |
| 231 | 57.112 | Schlosser: Preisspiegel erstellen | 1d | 2024-08-21 | 2024-08-21 | 230FS+3d |
| 232 | 57.113 | Schlosser: Vergabeverhandlung führen | 1d | 2024-08-27 | 2024-08-27 | 231FS+3d |
| 233 | 57.114 | Schlosser: Handwerkervertrag erstellen und versenden | 1d | 2024-08-28 | 2024-08-28 | 232 |
| 234 | 57.115 | Schlosser: Eingang Handwerkervertrag kontrollieren | 1d | 2024-09-03 | 2024-09-03 | 233FS+3d |
| 235 | 57.116 | Schlosser: Handwerkervertrag in Stammdaten / PZP erfassen | 1d | 2024-09-04 | 2024-09-04 | 234 |
| 236 | 57.117 | Garagentore: Ausschreibung fertigstellen und versenden | 1d | 2024-08-15 | 2024-08-15 | 118SS |
| 237 | 57.118 | Garagentore: Preisspiegel erstellen | 1d | 2024-08-21 | 2024-08-21 | 236FS+3d |
| 238 | 57.119 | Garagentore: Vergabeverhandlung führen | 1d | 2024-08-27 | 2024-08-27 | 237FS+3d |
| 239 | 57.120 | Garagentore: Handwerkervertrag erstellen und versenden | 1d | 2024-08-28 | 2024-08-28 | 238 |
| 240 | 57.121 | Garagentore: Eingang Handwerkervertrag kontrollieren | 1d | 2024-09-03 | 2024-09-03 | 239FS+3d |
| 241 | 57.122 | Garagentore: Handwerkervertrag in Stammdaten / PZP erfassen | 1d | 2024-09-04 | 2024-09-04 | 240 |
| 242 | 57.123 | Farben: Außenvisualisierung erstellen | 3d | 2024-08-07 | 2024-08-09 | 102 |
| 243 | 57.124 | Farben: Außenvisualisierung zur Definition der Farbanordnung der Hausfassade sowie vorläufiges Farbkonzept an Bauherr senden | 1d | 2024-08-12 | 2024-08-12 | 242 |
| 244 | 57.125 | Farben: Rückmeldung Bauherr zur Definition der Farbanordnung der Hausfassade sowie vorläufiges Farbkonzept | 3d | 2024-08-13 | 2024-08-15 | 243 |
| 245 | 57.126 | Farben: Terminabstimmung zur Bemusterung | 1d | 2024-08-16 | 2024-08-16 | 244 |
| 246 | 57.127 | Farben: Vorbereitung der Bemusterungsgegenstände zum vorläufigen Farbkonzept | 4d | 2024-08-19 | 2024-08-22 | 245 |
| 247 | 57.128 | Farben: Bemusterungstermin durchführen | 5d | 2024-08-26 | 2024-08-30 | 246FS+1d |
| 248 | 57.129 | Farben: Auswahl dokumentieren | 1d | 2024-09-02 | 2024-09-02 | 247 |
| 249 | 57.130 | Farben: Bemusterungszusammenstellung an Bauherr senden | 1d | 2024-09-03 | 2024-09-03 | 248 |
| 250 | 57.131 | Farben: Leistungsergänzung erstellen | 3d | 2024-09-04 | 2024-09-06 | 249 |
| 251 | 57.132 | Farben: Leistungsergänzung an Bauherr senden | 1d | 2024-09-09 | 2024-09-09 | 250 |
| 252 | 57.133 | Farben: Leistungsergänzung beauftragen | 4d | 2024-09-10 | 2024-09-13 | 251 |
| 253 | 57.134 | Fenster: Bemusterungstermin abstimmen | 1d | 2024-03-12 | 2024-03-12 | 77SS |
| 254 | 57.135 | Fenster: Muster beim ausführenden Betrieb für Burger-in-Haus Bemusterung anfordern | 4d | 2024-03-13 | 2024-03-18 | 253 |
| 255 | 57.136 | Fenster: Bemusterungstermin durchführen | 5d | 2024-03-19 | 2024-03-25 | 254 |
| 256 | 57.137 | Fenster: Auswahl dokumentieren | 1d | 2024-03-26 | 2024-03-26 | 255 |
| 257 | 57.138 | Fenster: Bemusterungszusammenstellung an Bauherr senden | 1d | 2024-03-27 | 2024-03-27 | 256 |
| 258 | 57.139 | Garagentor: Bemusterungstermin abstimmen | 1d | 2024-03-12 | 2024-03-12 | 77SS |

| ID | WBS | Task | Duration | Start | Finish | Predecessors |
| --- | --- | --- | --- | --- | --- | --- |
| 259 | 57.140 | Garagentor: Muster beim ausführenden Betrieb für Burger-in-Haus Bemusterung anfordern | 4d | 2024-03-13 | 2024-03-18 | 258 |
| 260 | 57.141 | Garagentor: Bemusterungstermin durchführen | 5d | 2024-03-19 | 2024-03-25 | 259 |
| 261 | 57.142 | Garagentor: Auswahl dokumentieren | 1d | 2024-03-26 | 2024-03-26 | 260 |
| 262 | 57.143 | Boden: Bemusterungstermin abstimmen | 1d | 2024-03-19 | 2024-03-19 | 86SS |
| 263 | 57.144 | Boden: Bemusterung der Bodenbeläge (außer Fliesen) | 5d | 2024-03-20 | 2024-03-26 | 262 |
| 264 | 57.145 | Boden: Bei Bedarf: Termin mit Bemusterungsbetrieb abstimmen | 1d | 2024-03-27 | 2024-03-27 | 263 |
| 265 | 57.146 | Boden: Vorauswahl an Bemusterungsbetrieb senden | 1d | 2024-04-03 | 2024-04-03 | 264FS+2d |
| 266 | 57.147 | Boden: Bemusterungstermin extern durchführen | 5d | 2024-04-09 | 2024-04-15 | 265FS+3d |
| 267 | 57.148 | Boden: Auswahl dokumentieren | 1d | 2024-04-16 | 2024-04-16 | 266 |
| 268 | 57.149 | Boden: Dokumentationsunterlagen an Bauherr senden | 1d | 2024-04-17 | 2024-04-17 | 267 |
| 269 | 57.150 | Boden: Bodenaufstellung erstellen | 5d | 2024-04-18 | 2024-04-24 | 268 |
| 270 | 57.151 | Fliesen: Bemusterungstermin abstimmen | 1d | 2024-03-19 | 2024-03-19 | 80SS |
| 271 | 57.152 | Fliesen: Bemusterung der Wand- und Bodenfliesen | 5d | 2024-03-20 | 2024-03-26 | 270 |
| 272 | 57.153 | Fliesen: Bei Bedarf: Termin mit Bemusterungsbetrieb abstimmen | 1d | 2024-03-27 | 2024-03-27 | 271 |
| 273 | 57.154 | Fliesen: Vorauswahl an Bemusterungsbetrieb senden | 1d | 2024-04-03 | 2024-04-03 | 272FS+2d |
| 274 | 57.155 | Fliesen: Bemusterungstermin extern durchführen | 5d | 2024-04-09 | 2024-04-15 | 273FS+3d |
| 275 | 57.156 | Fliesen: Auswahl dokumentieren | 1d | 2024-04-16 | 2024-04-16 | 274 |
| 276 | 57.157 | Fliesen: Dokumentationsunterlagen an BH senden | 1d | 2024-04-17 | 2024-04-17 | 275 |
| 277 | 57.158 | Fliesen- und Bodenbelagsaufstellung erstellen | 5d | 2024-04-18 | 2024-04-24 | 276 |
| 278 | 57.159 | Wand: Bemusterungstermin abstimmen | 1d | 2024-03-12 | 2024-03-12 | 77SS |
| 279 | 57.160 | Wand: Burger-in-Haus Bemusterung durchführen | 5d | 2024-03-13 | 2024-03-19 | 278 |
| 280 | 57.161 | Wand: Auswahl dokumentieren | 1d | 2024-03-20 | 2024-03-20 | 279 |
| 281 | 57.162 | Wand: Dokumentationsunterlagen an BH senden | 1d | 2024-03-21 | 2024-03-21 | 280 |
| 282 | 57.163 | Haustüre: Bemusterungstermin abstimmen | 1d | 2024-08-30 | 2024-08-30 | 186 |
| 283 | 57.164 | Schlosser: Bemusterungstermin abstimmen | 1d | 2024-03-12 | 2024-03-12 | 77SS |
| 284 | 57.165 | Schlosser: Burger-in-Haus Bemusterung durchführen | 5d | 2024-03-13 | 2024-03-19 | 283 |
| 285 | 57.166 | Schlosser: Bei Bedarf: Termin mit Bemusterungsbetrieb abstimmen | 1d | 2024-03-20 | 2024-03-20 | 284 |
| 286 | 57.167 | Schlosser: Vorauswahl an Bemusterungsbetrieb senden | 1d | 2024-03-25 | 2024-03-25 | 285FS+2d |
| 287 | 57.168 | Schlosser: Bemusterungstermin extern durchführen | 5d | 2024-04-02 | 2024-04-08 | 286FS+3d |
| 288 | 57.169 | Schlosser: Dokumentationsunterlagen an BH senden | 1d | 2024-04-09 | 2024-04-09 | 287 |
| 289 | 57.170 | Schlosser: Auswahl dokumentieren | 1d | 2024-04-10 | 2024-04-10 | 288 |
| 290 | 57.171 | Innentüren: Termin beim Bemusterungsbetrieb vereinbaren | 1d | 2024-03-19 | 2024-03-19 | 88SS |
| 291 | 57.172 | Innentüren: Bemusterung durchführen | 5d | 2024-03-25 | 2024-04-02 | 290FS+3d |
| 292 | 57.173 | Innentüren: Angebot an S.Burger senden | 1d | 2024-04-05 | 2024-04-05 | 291FS+2d |
| 293 | 57.174 | Innentüren: Leistungsergänzung erstellen | 3d | 2024-04-08 | 2024-04-10 | 292 |
| 294 | 57.175 | Innentüren: Leistungsergänzung an Bauherr senden | 1d | 2024-04-11 | 2024-04-11 | 293 |
| 295 | 57.176 | Innentüren: Leistungsergänzung beauftragen | 4d | 2024-04-12 | 2024-04-17 | 294 |
| 296 | 58 | Vorbereitungen Baustart | 3d | 2024-11-11 | 2024-11-13 |  |
| 297 | 59 | Beginn Baustart | 0d | 2024-11-11 | 2024-11-11 | 296SS |
| 298 | 60 | Spatenstich | 1d | 2024-11-11 | 2024-11-11 | 296SS |
| 299 | 61 | Feuerrohbauversicherung Bauherr abschließen | 2d | 2024-11-11 | 2024-11-12 | 296SS |
| 300 | 62 | Versicherung S. Burger abschließen | 2d | 2024-11-11 | 2024-11-12 | 296SS |
| 301 | 63 | Bauherrenbetreuung über Baustart informieren | 2d | 2024-11-11 | 2024-11-12 | 296SS |
| 302 | 64 | Antrag Strom/Baustrom erstellen und einreichen | 3d | 2024-11-11 | 2024-11-13 | 296SS |
| 303 | 65 | Antrag Wasser/Bauwasser erstellen und einreichen | 3d | 2024-11-11 | 2024-11-13 | 296SS |
| 304 | 66 | Antrag Telefon erstellen und einreichen | 3d | 2024-11-11 | 2024-11-13 | 296SS |
| 305 | 67 | Antrag Fernwärme/Übergabestation erstellen und einreichen | 3d | 2024-11-11 | 2024-11-13 | 296SS |
| 306 | 68 | Baubeginn der Genehmigungsbehörde anzeigen | 3d | 2024-11-11 | 2024-11-13 | 296SS |
| 307 | 69 | VORBEREITUNG Beginn Vertragsleistungen Firma S. Burger | 3d | 2024-11-14 | 2024-11-18 | 296 |
| 308 | 70 | Bauherr und Nachbarschaft über Baustart informieren | 1d | 2024-11-19 | 2024-11-19 | 307 |
| 309 | 71 | Kostenverfolgung BNK | 1d | 2024-11-19 | 2024-11-19 | 307 |
| 310 | 72 | Baustelleneinrichtung inkl. Kran planen | 2d | 2024-11-19 | 2024-11-20 | 307 |
| 311 | 73 | Baugrube auspflocken | 2d | 2024-11-19 | 2024-11-20 | 307 |
| 312 | 74 | Baustrom/Bauwasser organisieren | 1d | 2024-11-21 | 2024-11-21 | 310 |
| 313 | 75 | Projektstart Erdaushub | 1d | 2024-11-28 | 2024-11-28 | 311FS+5d |
| 314 | 76 | Baubeginn der Erdarbeiten | 15d | 2024-11-29 | 2024-12-19 | 313 |
| 315 | 77 | Erstgespräch durchführen (PJM, SFBL)- Baustelle | 1d | 2024-11-29 | 2024-11-29 | 314SS |
| 316 | 78 | Kran Vorhaltung | 83d | 2024-11-29 | 2025-04-08 |  |
| 317 | 79 | Kontrollieren ob Regen- und Schmutzwasser an Kanal / Zisterne angeschlossen ist | 1d | 2025-04-10 | 2025-04-10 | 316FS+1d |
| 318 | 80 | Entwässerungsarbeiten (BNK) vor Rohbau | 4d | 2024-12-13 | 2024-12-18 | 314FS-5d |
| 319 | 81 | Schnurgerüst erstellen | 3d | 2024-12-20 | 2025-01-07 | 314 |
| 320 | 82 | Vermesser Schnurgerüst disponieren | 1d | 2024-12-20 | 2024-12-20 | 319SS |
| 321 | 83 | Schnurgerüst einmessen | 1d | 2025-01-08 | 2025-01-08 | 319 |
| 322 | 84 | Baufreigabe beantragen, Einmessbescheinigung vorhanden | 1d | 2025-01-09 | 2025-01-09 | 321 |
| 323 | 85 | Baufreigabe Eingang prüfen | 1d | 2025-01-10 | 2025-01-10 | 322 |
| 324 | 86 | Baubeginnanzeige | 1d | 2025-01-13 | 2025-01-13 | 323 |
| 325 | 87 | Geplanter BEGINN VERTRAGSLEISTUNGEN Firma S. Burger | 1d | 2025-01-14 | 2025-01-14 | 324 |
| 326 | 88 | Bestellung Inventerkasten | 1d | 2025-01-15 | 2025-01-15 | 325 |
| 327 | 89 | RB1-Gründung und Bodenplatte | 4d | 2025-01-15 | 2025-01-20 | 325 |
| 328 | 90 | Baubegleitende Qualitätskontrolle – Gründung Bodenplatte vor Betonieren der Platte | 1d | 2025-01-15 | 2025-01-15 | 327SS |

| ID | WBS | Task | Duration | Start | Finish | Predecessors |
| --- | --- | --- | --- | --- | --- | --- |
| 329 | 91 | Bautreppe planen | 1d | 2025-01-15 | 2025-01-15 | 327SS |
| 330 | 92 | AZ Beginn Rohbauarbeiten | 3d | 2025-01-15 | 2025-01-17 | 327SS |
| 331 | 93 | Bauherrentermine an Bauherr senden | 1d | 2025-01-15 | 2025-01-15 | 327SS |
| 332 | 94 | Zimmermann Aufriss Planung und Freigabe | 8d | 2025-01-15 | 2025-01-24 | 327SS |
| 333 | 95 | Aufriss-/Abbundplanung mit Werkplanung abgleichen | 1d | 2025-01-27 | 2025-01-27 | 332 |
| 334 | 96 | Aufriss-/Abbundplanung an Rohbaubauleiter senden | 1d | 2025-01-28 | 2025-01-28 | 333 |
| 335 | 97 | RB2-Kellerwände | 5d | 2025-01-21 | 2025-01-27 | 327 |
| 336 | 98 | Kellerwände-Einlegearbeiten Elektro | 1d | 2025-01-23 | 2025-01-23 | 335FS-3d |
| 337 | 99 | Kellerwände-Einlegearbeiten Sanitär | 1d | 2025-01-23 | 2025-01-23 | 335FS-3d |
| 338 | 100 | Kellerwände-Einlegearbeiten Heizung | 1d | 2025-01-23 | 2025-01-23 | 335FS-3d |
| 339 | 101 | Baubegleitende Qualitätskontrolle – Kellerwände nach Abdichtung / vor Baugrube verfüllen | 1d | 2025-01-28 | 2025-01-28 | 335 |
| 340 | 102 | RB3-KG Decke | 4d | 2025-01-28 | 2025-01-31 | 335 |
| 341 | 103 | KG Decke-Einlegearbeiten Elektro | 1d | 2025-01-30 | 2025-01-30 | 340FS-2d |
| 342 | 104 | KG Decke-Einlegearbeiten Sanitär | 1d | 2025-01-30 | 2025-01-30 | 340FS-2d |
| 343 | 105 | KG Decke-Einlegearbeiten Heizung | 1d | 2025-01-30 | 2025-01-30 | 340FS-2d |
| 344 | 106 | Richtfest mit Bauherr abstimmen | 1d | 2025-02-03 | 2025-02-03 | 340 |
| 345 | 107 | AZ Fertigstellung Decke über KG | 3d | 2025-02-03 | 2025-02-05 | 340 |
| 346 | 108 | Erd2-Baugrube verfüllen | 3d | 2025-02-04 | 2025-02-06 | 340FS+1d |
| 347 | 109 | Überprüfung der örtlichen Geländerhöhen zur Anpassung in der Werkplanung | 1d | 2025-02-07 | 2025-02-07 | 346 |
| 348 | 110 | Herstellung des Fundamentes für die Wärmepumpe | 3d | 2025-02-10 | 2025-02-12 | 346FS+1d |
| 349 | 111 | Hausanschluss Wasser | 2d | 2025-02-04 | 2025-02-05 | 346SS |
| 350 | 112 | Hausanschluss Strom | 2d | 2025-02-04 | 2025-02-05 | 346SS |
| 351 | 113 | Hausanschluss Telekom | 2d | 2025-02-04 | 2025-02-05 | 346SS |
| 352 | 114 | Beantragung Telefonnummer durch Bauherr | 3d | 2025-02-20 | 2025-02-24 | 351FS+10d |
| 353 | 115 | RB4-EG-Wände | 5d | 2025-02-03 | 2025-02-07 | 340 |
| 354 | 116 | RB4-EG-Wände -Einlegearbeiten Elektro | 1d | 2025-02-05 | 2025-02-05 | 353FS-3d |
| 355 | 117 | RB5-EG-Decke | 6d | 2025-02-10 | 2025-02-17 | 353 |
| 356 | 118 | Fassadengerüst stellen | 2d | 2025-02-18 | 2025-02-19 | 355 |
| 357 | 119 | EG Decke - Einlegearbeiten Elektro | 1d | 2025-02-13 | 2025-02-13 | 355FS-3d |
| 358 | 120 | EG Decke - Einlegearbeiten Sanitär | 1d | 2025-02-13 | 2025-02-13 | 355FS-3d |
| 359 | 121 | EG Decke - Einlegearbeiten Heizung | 1d | 2025-02-13 | 2025-02-13 | 355FS-3d |
| 360 | 122 | AZ Fertigstellung Decke über EG | 3d | 2025-02-18 | 2025-02-20 | 355 |
| 361 | 123 | RB6-OG-Wände/Giebel | 11d | 2025-02-18 | 2025-03-04 | 355 |
| 362 | 124 | RB6-OG-Wände/Giebel - Einlegearbeiten Elektro | 1d | 2025-02-26 | 2025-02-26 | 361FS-5d |
| 363 | 125 | RB7-OG-Decke | 6d | 2025-03-05 | 2025-03-12 | 361 |
| 364 | 126 | OG Decke - Einlegearbeiten Elektro | 1d | 2025-03-10 | 2025-03-10 | 363FS-3d |
| 365 | 127 | OG Decke - Einlegearbeiten Sanitär | 1d | 2025-03-10 | 2025-03-10 | 363FS-3d |
| 366 | 128 | OG Decke - Einlegearbeiten Heizung | 1d | 2025-03-10 | 2025-03-10 | 363FS-3d |
| 367 | 129 | AZ Fertigstellung Rohbauarbeiten | 3d | 2025-03-13 | 2025-03-17 | 363 |
| 368 | 130 | RB Meterriss anbringen | 1d | 2025-03-13 | 2025-03-13 | 363 |
| 369 | 131 | Puffer-Rohbau-Richttermin | 3d | 2025-03-13 | 2025-03-17 | 363 |
| 370 | 132 | Bautür setzen | 1d | 2025-03-14 | 2025-03-14 | 368 |
| 371 | 133 | Zimmerarbeiten/Aufrichten | 5d | 2025-03-18 | 2025-03-24 | 369 |
| 372 | 134 | Fertigstellung Rohbau / Zimmerarbeiten | 1d | 2025-03-25 | 2025-03-25 | 371 |
| 373 | 135 | Möglicher Termin Richtfest | 1d | 2025-03-25 | 2025-03-25 | 371 |
| 374 | 136 | Bauzustandsbesichtigung Schornsteinfeger | 1d | 2025-03-25 | 2025-03-25 | 371 |
| 375 | 137 | Baubegleitende Qualitätskontrolle – Rohbau nach Ausstellung des Dachstuhls | 1d | 2025-03-25 | 2025-03-25 | 371 |
| 376 | 138 | RB7-Ausmauern Gebälk | 2d | 2025-03-20 | 2025-03-21 | 371SS+2d |
| 377 | 139 | Blechnerarbeiten | 2d | 2025-03-31 | 2025-04-01 | 371FS+4d |
| 378 | 140 | Dach decken | 3d | 2025-04-04 | 2025-04-08 | 377FS+2d |
| 379 | 141 | PV-Anlage montieren | 5d | 2025-04-11 | 2025-04-17 | 378FS+2d |
| 380 | 142 | AZ Fertigstellung Zimmermann | 1d | 2025-04-09 | 2025-04-09 | 378 |
| 381 | 143 | Dämmen des Daches | 3d | 2025-04-09 | 2025-04-11 | 378 |
| 382 | 144 | Dampfbremse anbringen | 3d | 2025-04-14 | 2025-04-16 | 381 |
| 383 | 145 | Baubegleitende Qualitätskontrolle – Dach nach Dachdeckung und Dachkempnerarbeiten | 1d | 2025-04-17 | 2025-04-17 | 382 |
| 384 | 146 | Fensterliste anfordern und prüfen | 5d | 2025-01-28 | 2025-02-03 | 387SS-45d |
| 385 | 147 | Fensterliste zur Freigabe an Bauherr senden und Eingang überwachen | 5d | 2025-02-04 | 2025-02-10 | 384 |
| 386 | 148 | Fenster bestellen | 1d | 2025-02-11 | 2025-02-11 | 385 |
| 387 | 149 | Fenster Montage | 5d | 2025-04-01 | 2025-04-07 | 371FS+5d |
| 388 | 150 | Nebeneingangstür Montage | 1d | 2025-04-08 | 2025-04-08 | 387 |
| 389 | 151 | Fenster eindichten / zweite Abdichtungsebene | 3d | 2025-04-11 | 2025-04-15 | 388FS+2d |
| 390 | 152 | Außenfensterbänke Alu - Montage | 2d | 2025-04-17 | 2025-04-22 | 389FS+1d |
| 391 | 153 | Rollladen/Jalousien Montage | 2d | 2025-04-23 | 2025-04-24 | 390 |
| 392 | 154 | Zustandsfeststellung Fenster | 1d | 2025-04-25 | 2025-04-25 | 391 |
| 393 | 155 | Garagentor Montage | 2d | 2025-04-01 | 2025-04-02 | 371FS+5d |
| 394 | 156 | Garagentor bestellen | 2d | 2025-02-06 | 2025-02-07 | 393FS-40d |
| 395 | 157 | Haustüre Montage | 2d | 2025-04-01 | 2025-04-02 | 371FS+5d |
| 396 | 158 | Haustüre bestellen | 2d | 2025-02-06 | 2025-02-07 | 395FS-40d |
| 397 | 159 | Putz 1 - Grundputz außen | 6d | 2025-04-30 | 2025-05-08 | 392FS+2d |
| 398 | 160 | Geländehöhen durch Landschaftsgärtner genau einzeichnen | 1d | 2025-05-16 | 2025-05-16 | 397FS+5d |

| ID | WBS | Task | Duration | Start | Finish | Predecessors |
| --- | --- | --- | --- | --- | --- | --- |
| 399 | 161 | Putz 2 - Sockelputz eindichten und filzen | 2d | 2025-05-13 | 2025-05-14 | 397FS+2d |
| 400 | 162 | Maler4 Dachuntersicht streichen (dritter Anstrich) | 4d | 2025-05-13 | 2025-05-16 | 397FS+2d |
| 401 | 163 | Flachdachabdichtungen | 5d | 2025-05-16 | 2025-05-22 | 397FS+5d |
| 402 | 164 | Putz 3 - Edelputz aufbringen | 2d | 2025-05-27 | 2025-05-28 | 397FS+12d |
| 403 | 165 | Ausführung Regenfallrohre | 2d | 2025-05-30 | 2025-06-02 | 402 |
| 404 | 166 | Schlosser Endmontage - Fassadenelemente montieren | 2d | 2025-05-30 | 2025-06-02 | 402 |
| 405 | 167 | Baubegleitende Qualitätskontrolle – Fassadengestaltung | 1d | 2025-06-03 | 2025-06-03 | 404 |
| 406 | 168 | Fassadengerüst abbauen | 2d | 2025-06-03 | 2025-06-04 | 404 |
| 407 | 169 | Kontrollieren ob Regen- und Schmutzwasser an Kanal / Zisterne angeschlossen ist | 1d | 2025-06-13 | 2025-06-13 | 406FS+5d |
| 408 | 170 | Streichen des Haustechnikraumes(falls vereinbart) | 2d | 2025-04-01 | 2025-04-02 | 387SS |
| 409 | 171 | Rohbaubesprechung Haustechnikraum | 1d | 2025-04-04 | 2025-04-04 | 408FS+1d |
| 410 | 172 | Abstimmungsgespräch vor Rohinstallation (PJM, SFBL) | 1d | 2025-04-04 | 2025-04-04 | 409SS |
| 411 | 173 | Sanitär 1-Rohinstallation | 11d | 2025-04-10 | 2025-04-28 | 410FS+3d |
| 412 | 174 | Heizung 1-Rohinstallation vertikal | 11d | 2025-04-10 | 2025-04-28 | 410FS+3d |
| 413 | 175 | Heizlastberechnung anfordern | 1d | 2025-05-07 | 2025-05-07 | 412FS+5d |
| 414 | 176 | Anforderung des Verlegeabstandes für die Fußbodenheizung | 1d | 2025-05-07 | 2025-05-07 | 412FS+5d |
| 415 | 177 | Elektro 1-Rohinstallation | 11d | 2025-04-10 | 2025-04-28 | 410FS+3d |
| 416 | 178 | Aufzug 1-Rohinstallation | 15d | 2025-04-29 | 2025-05-20 | 415 |
| 417 | 179 | Brandschutzdurchführungen (Sanitär/Heizung) | 3d | 2025-05-02 | 2025-05-06 | 412FS+2d |
| 418 | 180 | Brandschutzdurchführungen (Elektro) | 3d | 2025-05-02 | 2025-05-06 | 415FS+2d |
| 419 | 181 | Deckendurchbrücke schließen | 2d | 2025-05-09 | 2025-05-12 | 418FS+2d |
| 420 | 182 | Baubegleitende Qualitätskontrolle – Rohinstallation Haustechnik vor Verdecken der Leitungen | 1d | 2025-04-29 | 2025-04-29 | 415 |
| 421 | 183 | Abpressprotokoll erstellen | 1d | 2025-04-29 | 2025-04-29 | 412 |
| 422 | 184 | Vormauerung in Trockenbau | 5d | 2025-04-30 | 2025-05-07 | 412FS+1d |
| 423 | 185 | AZ Fertigstellung Rohinstallationen | 3d | 2025-05-07 | 2025-05-09 | 422FS-1d |
| 424 | 186 | Kontrolle Anschluß Rückstauklappe, Hauseinführungen, Abläufe,SW-Entwässerung | 9d | 2025-05-12 | 2025-05-22 | 422FS+2d |
| 425 | 187 | Putz 4-Innen (Grundputz) | 9d | 2025-05-12 | 2025-05-22 | 422FS+2d |
| 426 | 188 | Innenfensterbänke bestellen | 1d | 2025-05-23 | 2025-05-23 | 425 |
| 427 | 189 | Innenfensterbänke Stein - Montage | 2d | 2025-06-11 | 2025-06-12 | 426FS+10d |
| 428 | 190 | Baubegleitende Qualitätskontrolle – Innenputz / Trockenbau | 1d | 2025-05-23 | 2025-05-23 | 425 |
| 429 | 191 | Grundisolierung Estrich | 3d | 2025-05-26 | 2025-05-28 | 425FS+1d |
| 430 | 192 | Tackerplatten Fußbodenheizung verlegen | 1d | 2025-05-30 | 2025-05-30 | 429 |
| 431 | 193 | Baubegleitende Qualitätskontrolle – Estrichvorbereitung vor Einbau Estrich | 1d | 2025-06-02 | 2025-06-02 | 430 |
| 432 | 194 | Heizung 2 - Heizschlangenverlegen | 2d | 2025-06-03 | 2025-06-04 | 430FS+1d |
| 433 | 195 | Estrich | 4d | 2025-06-11 | 2025-06-16 | 432FS+3d |
| 434 | 196 | Aufheizprotokoll an SBL übergeben | 1d | 2025-06-17 | 2025-06-17 | 433 |
| 435 | 197 | Aufheizprotokoll an Heizungsinstallateur weiterleiten | 1d | 2025-06-18 | 2025-06-18 | 434 |
| 436 | 198 | AZ Fertigstellung Estrich | 3d | 2025-06-17 | 2025-06-20 | 433 |
| 437 | 199 | Estrich-Trocknung / Vorbereitung Einbau und Aufheizung Estrich | 1d | 2025-06-17 | 2025-06-17 | 433 |
| 438 | 200 | Leckagenprüfung | 1d | 2025-06-23 | 2025-06-23 | 433FS+3d |
| 439 | 201 | Begehbarkeit Estrich | 1d | 2025-06-23 | 2025-06-23 | 433FS+3d |
| 440 | 202 | Estrich anschleifen | 1d | 2025-06-25 | 2025-06-25 | 439FS+1d |
| 441 | 203 | Strom ablesen vor Beginn des Aufheizens | 1d | 2025-06-20 | 2025-06-20 | 442SS-5d |
| 442 | 204 | Aufheizphase Estrich | 10d | 2025-06-27 | 2025-07-10 | 433FS+7d |
| 443 | 205 | Bauherr zur Fliesenbesprechung einladen | 1d | 2025-07-04 | 2025-07-04 | 442SS+5d |
| 444 | 206 | Strom ablesen nach Beendigung des Aufheizens | 1d | 2025-07-11 | 2025-07-11 | 442 |
| 445 | 207 | Aufheizprotokoll an SBL übergeben | 1d | 2025-07-11 | 2025-07-11 | 442 |
| 446 | 208 | Heizung 3-Heizraummontage und Inbetriebnahme | 6d | 2025-07-21 | 2025-07-28 | 442FS+6d |
| 447 | 209 | Elektro 2- Haustechnikraum fertigstellen | 6d | 2025-07-21 | 2025-07-28 | 442FS+6d |
| 448 | 210 | Treppe messen | 1d | 2025-07-18 | 2025-07-18 | 442FS+5d |
| 449 | 211 | Türe messen | 1d | 2025-07-18 | 2025-07-18 | 442FS+5d |
| 450 | 212 | Innentürliste zur Freigabe an Bauherr senden | 1d | 2025-07-23 | 2025-07-23 | 449FS+2d |
| 451 | 213 | Freigabe der Innentüren | 1d | 2025-07-31 | 2025-07-31 | 450FS+5d |
| 452 | 214 | Nach Freigabe Türen bestellen | 1d | 2025-08-05 | 2025-08-05 | 451FS+2d |
| 453 | 215 | Aufzug 2 - Aufzug anschließen | 1d | 2025-08-05 | 2025-08-05 | 447FS+5d |
| 454 | 216 | Aufzug 3 - Inberiebnahme nach E-Anschluss | 1d | 2025-08-07 | 2025-08-07 | 453FS+1d |
| 455 | 217 | Trockenbauarbeiten | 5d | 2025-07-03 | 2025-07-09 | 439FS+7d |
| 456 | 218 | Malerarbeiten Decken | 10d | 2025-07-10 | 2025-07-23 | 455 |
| 457 | 219 | Bautreppe ausbauen | 1d | 2025-07-23 | 2025-07-23 | 456FS-1d |
| 458 | 220 | TRH Gerüst stellen | 1d | 2025-07-24 | 2025-07-24 | 457 |
| 459 | 221 | Estrich Trockenestrich HWF | 4d | 2025-07-25 | 2025-07-30 | 458 |
| 460 | 222 | Deckenstirnverkleidung, Bolzen Treppenbau | 1d | 2025-07-25 | 2025-07-25 | 458 |
| 461 | 223 | Fliesenbesprechung / Ausführungsdetails mit Bauherr abstimmen | 1d | 2025-07-18 | 2025-07-18 | 442FS+5d |
| 462 | 224 | Abstimmungsgespräch nach Fliesenbesprechung (PJM, SFBL) | 1d | 2025-07-21 | 2025-07-21 | 461 |
| 463 | 225 | CM-Messung-Estrich Fliesen | 1d | 2025-07-23 | 2025-07-23 | 464SS-1d |
| 464 | 226 | Abdichtung Feuchträume | 1d | 2025-07-24 | 2025-07-24 | 462FS+2d |
| 465 | 227 | Baubegleitende Qualitätskontrolle – Fliesenarbeiten nach Abdichtung der Sanitärräume vor Verfliesen | 1d | 2025-07-25 | 2025-07-25 | 464 |
| 466 | 228 | Setzen der Bade.- bzw. Duschwanne | 1d | 2025-07-25 | 2025-07-25 | 464 |
| 467 | 229 | Fliesen1-Wandfliesen | 5d | 2025-07-25 | 2025-07-31 | 464 |
| 468 | 230 | Fliesen2-Bodenfliesen | 5d | 2025-08-01 | 2025-08-07 | 467 |

| ID | WBS | Task | Duration | Start | Finish | Predecessors |
| --- | --- | --- | --- | --- | --- | --- |
| 469 | 231 | Bestellen der Duschabtrennung | 1d | 2025-08-11 | 2025-08-11 | 468FS+1d |
| 470 | 232 | AZ Fertigstellung Fliesen | 3d | 2025-08-08 | 2025-08-12 | 468 |
| 471 | 233 | Rotkalkfilz auftragen | 10d | 2025-08-08 | 2025-08-21 | 468 |
| 472 | 234 | Anstrich Treppenhaus | 2d | 2025-08-22 | 2025-08-25 | 471 |
| 473 | 235 | Interne Abnahme Putzoberfläche | 1d | 2025-08-22 | 2025-08-22 | 471 |
| 474 | 236 | Elektro 3 - Dosen setzen, Abdeckungen fertig montieren | 3d | 2025-08-25 | 2025-08-27 | 471FS+1d |
| 475 | 237 | Heizung 4 -Fertigmontage Heizkörper etc. | 1d | 2025-08-22 | 2025-08-22 | 471 |
| 476 | 238 | Sanitär 3 - Fertigmontage | 3d | 2025-08-25 | 2025-08-27 | 475 |
| 477 | 239 | Aufzug 4-Lüftungsgitter montieren | 2d | 2025-08-29 | 2025-09-01 | 474FS+1d |
| 478 | 240 | Wasseruhr abmelden | 1d | 2025-08-28 | 2025-08-28 | 476 |
| 479 | 241 | Baustromzähler abmelden | 1d | 2025-08-28 | 2025-08-28 | 476 |
| 480 | 242 | Holztreppe montieren | 2d | 2025-08-26 | 2025-08-27 | 471FS+2d |
| 481 | 243 | Holztreppe schützen | 1d | 2025-08-28 | 2025-08-28 | 480 |
| 482 | 244 | CM-Messung-Estrich Bodenbeläge | 1d | 2025-08-01 | 2025-08-01 | 483SS-20d |
| 483 | 245 | Bodenbeläge verlegen | 4d | 2025-08-29 | 2025-09-03 | 481 |
| 484 | 246 | Bodenbelag bestellen | 3d | 2025-06-04 | 2025-06-06 | 483SS-60d |
| 485 | 247 | Interne Abnahme Bodenbeläge | 1d | 2025-09-04 | 2025-09-04 | 483 |
| 486 | 248 | Bodenbeläge schützen | 1d | 2025-09-05 | 2025-09-05 | 485 |
| 487 | 249 | Innentüren montieren | 4d | 2025-09-09 | 2025-09-12 | 486FS+1d |
| 488 | 250 | Fliesen3-Fliesensockel fertigstellen | 2d | 2025-09-16 | 2025-09-17 | 487FS+1d |
| 489 | 251 | Boden2-Sockelleiste fertigstellen | 2d | 2025-09-16 | 2025-09-17 | 487FS+1d |
| 490 | 252 | Baubegleitende Qualitätskontrolle – Innenausbau / Kontrolle Haustechnik | 1d | 2025-09-18 | 2025-09-18 | 489 |
| 491 | 253 | Maler3 Nacharbeiten | 5d | 2025-09-18 | 2025-09-24 | 489 |
| 492 | 254 | Gebäudereinigung | 2d | 2025-09-25 | 2025-09-26 | 491 |
| 493 | 255 | Blowerdoor Test | 1d | 2025-09-30 | 2025-09-30 | 492FS+1d |
| 494 | 256 | Interne Vorabnahme durchführen (PJM, SFBL) | 1d | 2025-10-01 | 2025-10-01 | 493 |
| 495 | 257 | Interne Abnahme | 3d | 2025-10-01 | 2025-10-06 | 493 |
| 496 | 258 | Endarbeiten | 7d | 2025-10-07 | 2025-10-15 | 495 |
| 497 | 259 | Anfrage für Referenzfotos | 1d | 2025-10-07 | 2025-10-07 | 496SS |
| 498 | 260 | Schlußabnahme Feuerungsanlage | 1d | 2025-10-16 | 2025-10-16 | 496 |
| 499 | 261 | Einweisung der Heizungs- und ggf. Lüftungsanlage | 1d | 2025-10-16 | 2025-10-16 | 496 |
| 500 | 262 | Einweisung der Elektroinstallation | 1d | 2025-10-16 | 2025-10-16 | 496 |
| 501 | 263 | KNX-Datei von Elektriker an Bauleiter übergeben | 1d | 2025-10-16 | 2025-10-16 | 496 |
| 502 | 264 | Erstellung des Abnahmeprotokolls | 1d | 2025-10-16 | 2025-10-16 | 496 |
| 503 | 265 | Aufzug 5-TÜV Abnahme | 1d | 2025-10-16 | 2025-10-16 | 496 |
| 504 | 266 | Baubegleitende Qualitätskontrolle – Vorbegehung für die Abnahme | 1d | 2025-10-16 | 2025-10-16 | 496 |
| 505 | 267 | Dokumentationsunterlagen erstellen | 1d | 2025-10-16 | 2025-10-16 | 496 |
| 506 | 268 | Frühzeitige Koordination mit PJM zur Teilnahme an der Abnahme | 1d | 2025-10-01 | 2025-10-01 | 507SS-15d |
| 507 | 269 | Bauabnahme durchführen - (Vereinbart gemäß Vertrag ... Beginn ab Gründung Bodenplatte zzgl. wetterbedingten Ausfalltagen) | 1d | 2025-10-23 | 2025-10-23 | 496FS+5d |
| 508 | 270 | Ende Baustart | 1d | 2025-10-23 | 2025-10-23 |  |
| 509 | 271 | KNX-Elektro-Datei von Bauleiter an Bauherr übergeben | 1d | 2025-10-23 | 2025-10-23 | 507SS |
| 510 | 272 | Übergabe eines Bauherren Ordners | 1d | 2025-10-23 | 2025-10-23 | 507SS |
| 511 | 273 | Info Verkäufer Bauabnahme | 1d | 2025-10-10 | 2025-10-10 | 507FS-10d |
| 512 | 274 | Behördliche Abnahme durchführen | 1d | 2025-10-10 | 2025-10-10 | 507FS-10d |
| 513 | 275 | Besprechung in ToDo-Manager von Abnahmeprotokoll erstellen | 1d | 2025-10-24 | 2025-10-24 | 507 |
| 514 | 276 | Abnahmeprotokoll bearbeiten in Bezug auf Einbehalte von .noch auszuführende Leistungen. und .wirtschaftlicher Ausgleich. | 3d | 2025-10-27 | 2025-10-29 | 513 |
| 515 | 277 | Schlussrechnung vorbereiten | 2d | 2025-10-30 | 2025-10-31 | 514 |
| 516 | 278 | VE-SR-Liste mit .noch zu erbringende Leistungen. ergänzen | 1d | 2025-10-30 | 2025-10-30 | 514 |
| 517 | 279 | Leistungsbewertung in € der in der Abnahme festgestellten Punkte durchführen | 1d | 2025-10-31 | 2025-10-31 | 516 |
| 518 | 280 | Telefonische Abstimmung mit BH über Mikogo welcher Betrag in € in der SR in Abzug gebracht werden kann | 1d | 2025-11-03 | 2025-11-03 | 517 |
| 519 | 281 | Nacharbeiten aus Abnahme komplett erledigt | 1d | 2025-10-30 | 2025-10-30 | 514 |
| 520 | 282 | Kücheneinbau und eventuelle Einbaumöbel | 3d | 2025-11-04 | 2025-11-06 | 519FS+2d |
| 521 | 283 | Terminierung Referenzfotos | 1d | 2025-11-07 | 2025-11-07 | 520 |
| 522 | 284 | Aufnehmen Referenzfotos | 1d | 2025-11-17 | 2025-11-17 | 521FS+5d |
| 523 | 285 | Schlussrechnung final mit Projektmanager prüfen | 1d | 2025-11-04 | 2025-11-04 | 518 |
| 524 | 286 | Schlussrechnung freigeben | 1d | 2025-11-05 | 2025-11-05 | 523 |
| 525 | 287 | Schlussrechnung versenden | 1d | 2025-11-10 | 2025-11-10 | 524FS+2d |
| 526 | 288 | Mitteilung Baurechtsbehörde - Bauleitertätigkeit beendet | 1d | 2025-11-13 | 2025-11-13 | 525FS+2d |
| 527 | 289 | Rückforderung der Vertragserfüllungsbürgschaft | 1d | 2025-11-10 | 2025-11-10 | 524FS+2d |
| 528 | 290 | Möglicher unverbindlicher Einzugstermin | 1d | 2025-11-07 | 2025-11-07 | 520 |
| 529 | 291 | Einzugsgeschenk | 1d | 2025-11-10 | 2025-11-10 | 528 |
| 530 | 292 | Besuch Bauherren durch PL/Verkäufer | 3d | 2026-02-24 | 2026-02-26 | 529FS+65d |
| 531 | 293 | Zahlungseingang kontrollieren - Abgleich mit VER-SR-Liste | 1d | 2026-01-09 | 2026-01-09 | 526FS+30d |
| 532 | 294 | Außenanlage erstellen | 20d | 2025-06-05 | 2025-07-04 | 406 |
| 533 | 295 | After Sale - Projektabschluss nach Gewährleistungszeitraum | 1d | 2026-01-16 | 2026-01-16 | 507FS+50d |
| 534 | 296 | Dispo Block A (Rohbau) | 2d | 2024-12-03 | 2024-12-04 | 327FS-25d |
| 535 | 297 | Dispo Block B - Vorinformation (Dacharbeiten) | 2d | 2025-01-28 | 2025-01-29 | 327FS+5d |
| 536 | 298 | Dispo Block B (Dacharbeiten) | 2d | 2025-03-13 | 2025-03-14 | 371FS-8d |
| 537 | 299 | Dispo Block C - Vorinformation (Fenster etc.) | 2d | 2025-01-28 | 2025-01-29 | 327FS+5d |
| 538 | 300 | Dispo Block C (Fenster etc.) | 2d | 2025-03-27 | 2025-03-28 | 387FS-8d |

| ID | WBS | Task | Duration | Start | Finish | Predecessors |
| --- | --- | --- | --- | --- | --- | --- |
| 539 | 301 | Dispo Block D (Fassade - Gerüst) | 2d | 2025-01-29 | 2025-01-30 | 335FS+1d |
| 540 | 302 | Dispo Block E (Fassade - Grundputz) | 2d | 2025-04-28 | 2025-04-29 | 397FS-8d |
| 541 | 303 | Dispo Block F (Rohinstallation) | 2d | 2025-04-08 | 2025-04-09 | 411FS-13d |
| 542 | 304 | Dispo Block G (Innenputz) | 2d | 2025-05-13 | 2025-05-14 | 425FS-8d |
| 543 | 305 | Dispo Block H - Vorinformation (Estrich) | 2d | 2025-01-28 | 2025-01-29 | 327FS+5d |
| 544 | 306 | Dispo Block H (Estrich) | 2d | 2025-06-04 | 2025-06-05 | 433FS-8d |
| 545 | 307 | Dispo Block I - Vorinformation (Trockenbau) | 2d | 2025-01-28 | 2025-01-29 | 327FS+5d |
| 546 | 308 | Dispo Block I (Trockenbau) | 2d | 2025-06-30 | 2025-07-01 | 455FS-8d |
| 547 | 309 | Dispo Block J (Maler/Heizraum fertigstellen) | 2d | 2025-07-08 | 2025-07-09 | 456FS-12d |
| 548 | 310 | Dispo Block K (Fliesen) | 2d | 2025-07-11 | 2025-07-14 | 467FS-15d |
| 549 | 311 | Dispo Block L (Rotkalk - Innentüren) | 2d | 2025-08-01 | 2025-08-04 | 471FS-15d |
| 550 | 312 | Dispo Block M (Endarbeiten Innen) | 2d | 2025-09-03 | 2025-09-04 | 487FS-8d |
| 551 | 313 | PGII - Bauantrag | 93d | 2024-07-08 | 2024-11-15 |  |
| 552 | 314 | PGII - Ausführungsplanung 1 | 41d | 2024-08-14 | 2024-10-10 |  |
| 553 | 315 | PGII - Ausführungsplanung 2 | 41d | 2024-08-14 | 2024-10-10 |  |
| 554 | 316 | PGII - Rohbau | 45d | 2025-01-14 | 2025-03-17 |  |
| 555 | 317 | PGII - Bauleitung | 397d | 2024-03-20 | 2025-10-30 |  |
